# Business Name Generator

Schedule from MS Project, 2013-07-04 to 2013-07-29, costs in €.

## Calendars

- Standard: Mon-Fri 08:00-12:00, 13:00-17:00; Sat-Sun off.

## Resources

| Resource | Rate |
| --- | --- |
| Andy Handy | 25 |
| Betty Doe | 10 |
| Frank Doe | 10 |
| John Doe |  |
| Shed Kit | 1250 |

## Schedule

| ID | WBS | Task | Type | Duration | Start | Finish | Predecessors | Total slack | Free slack | Constraint | Resources | Work | Cost |
| --- | --- | --- | --- | --- | --- | --- | --- | --- | --- | --- | --- | --- | --- |
| 1 | 1 | Order kit & schedule delivery |  | 1d | 2013-07-04 | 2013-07-04 |  | 4d | 0d |  | John Doe [25%] | 2h |  |
| 2 | 2 | **Preparation** |  | 7.6d | 2013-07-04 | 2013-07-15 | 1SS | 0d |  |  |  | 52h | 440 |
| 3 | 2.1 | Site preparation |  | 2d | 2013-07-04 | 2013-07-05 |  | 4d |  |  | Betty Doe [75%]; Frank Doe [75%]; John Doe [75%] | 36h | 240 |
| 4 | 2.2 | Pour the foundation |  | 1.6d | 2013-07-12 | 2013-07-15 | 3 | 0d |  | start no earlier than 2013-07-12 | Andy Handy [62.5%]; John Doe [62.5%] | 16h | 200 |
| 5 | 3 | Receive the delivery |  | 1d | 2013-07-18 | 2013-07-19 | 2FS+3d | 0d |  |  | John Doe [25%] | 2h |  |
| 6 | 4 | Delivery milestone | milestone | 0d | 2013-07-19 | 2013-07-19 | 5 | 6d |  |  |  |  |  |
| 7 | 5 | **Assembly** |  | 7d | 2013-07-18 | 2013-07-29 | 5SS | 0d |  |  |  | 26.16h | 312 |
| 8 | 5.1 | Assemble kit |  | 2d | 2013-07-18 | 2013-07-22 |  | 0d |  |  | Andy Handy [63%]; John Doe [63%] | 20.16h | 252 |
| 9 | 5.2 | Stain the shed |  | 1d | 2013-07-25 | 2013-07-26 | 8FS+3d | 0d |  |  | Betty Doe [25%]; Frank Doe [25%] | 4h | 40 |
| 10 | 5.3 | Plant landscaping |  | 1d | 2013-07-26 | 2013-07-29 | 9 | 0d |  |  | Betty Doe [25%] | 2h | 20 |
| 11 | 6 | Fill the shed |  | 1d | 2013-07-25 | 2013-07-26 | 9SS | 1d |  |  |  |  |  |
